# Projet manette

Schedule from MS Project, 2019-03-04 to 2019-07-01, 7 hours a day, A marks actual dates.
Microsoft Corporation

## Calendars

- Standard: Mon-Fri 09:00-12:00, 14:00-18:00; Sat-Sun off. Exceptions (off unless hours are given): 2019-04-15 to 2019-04-26 (Vacances de pâques), 2019-05-30 (Ascension), 2019-06-10 (Pentecôte).

## Schedule

| ID | WBS | Task | Type | Duration | Start | Finish | Predecessors | Complete | Remaining | Total slack | Free slack | Constraint |
| --- | --- | --- | --- | --- | --- | --- | --- | --- | --- | --- | --- | --- |
| 1 | 1 | **Analyse** |  | 10d | 2019-03-04 A | 2019-03-18 A |  | 100% |  |  |  |  |
| 2 | 1.1 | Lecture du classeur |  | 2d | 2019-03-04 A | 2019-03-05 A |  | 100% |  |  |  |  |
| 3 | 1.2 | Recherche de documentation |  | 2d | 2019-03-06 A | 2019-03-07 A |  | 100% |  |  |  |  |
| 4 | 1.3 | Choix des composants |  | 3d | 2019-03-12 A | 2019-03-14 A |  | 100% |  |  |  |  |
| 5 | 1.4 | Décision sur le module Bluetooth |  | 1d | 2019-03-07 A | 2019-03-07 A |  | 100% |  |  |  |  |
| 6 | 1.5 | Commande d'ESP32 | milestone | 0d | 2019-03-08 A | 2019-03-08 A | 5 | 100% |  |  |  |  |
| 7 | 1.6 | Rédaction du cahier des charges |  | 1d | 2019-03-15 A | 2019-03-15 A |  | 100% |  |  |  | start no earlier than 2019-03-15 |
| 8 | 1.7 | Fin de phase préprojet | milestone | 0d | 2019-03-18 A | 2019-03-18 A | 7 | 100% |  |  |  |  |
| 9 | 2 | **Mise en place de la communication** |  | 18d | 2019-03-08 A | 2019-04-03 A |  | 100% |  |  |  |  |
| 10 | 2.1 | Délai de livraison de la commande ESP32 |  | 11d | 2019-03-08 A | 2019-03-22 A | 6 | 100% |  |  |  | finish no earlier than 2019-03-22 |
| 11 | 2.2 | Test Arduino ESP32 |  | 4d | 2019-03-22 A | 2019-03-27 A | 10 | 100% |  |  |  |  |
| 12 | 2.3 | Mise en place d'un protocole définitif: RBCP |  | 3d | 2019-03-28 A | 2019-04-01 A | 11 | 100% |  |  |  |  |
| 13 | 2.4 | Protocole RBCP établi, fonctionnel | milestone | 0d | 2019-04-02 A | 2019-04-02 A | 12 | 100% |  |  |  |  |
| 14 | 2.5 | Mise en place d'une interface rudimentaire (manette breadboard) |  | 2d | 2019-04-01 A | 2019-04-02 A | 13 | 100% |  |  |  |  |
| 15 | 2.6 | Manette breadboard fonctionnelle | milestone | 0d | 2019-04-03 A | 2019-04-03 A | 14 | 100% |  |  |  |  |
| 16 | 3 | **Conception layout manette universelle** |  | 57d | 2019-03-08 A | 2019-06-12 |  | 78% | 12.54d | 13d |  |  |
| 17 | 3.1 | Définition des élements (voir README) |  | 1d | 2019-04-02 A | 2019-04-02 A |  | 100% |  |  |  |  |
| 18 | 3.2 | Commande des élements | milestone | 0d | 2019-04-03 A | 2019-04-03 A | 17 | 100% |  |  |  |  |
| 19 | 3.3 | Délai de commande des élements |  | 15d | 2019-04-03 A | 2019-05-08 A | 18 | 100% |  |  |  | finish no earlier than 2019-05-07 |
| 20 | 3.4 | Mise en place des élements sur le PCB |  | 2d | 2019-06-11 | 2019-06-12 | 19, 24 |  |  | 13d |  | start no earlier than 2019-05-16 |
| 21 | 3.5 | Schéma électrique |  | 2d | 2019-03-08 A | 2019-03-11 A |  | 100% |  |  |  |  |
| 22 | 3.6 | Conception du PCB de la manette universelle |  | 21d | 2019-04-08 A | 2019-05-26 A | 21 | 100% |  |  |  | finish no earlier than 2019-05-26 |
| 23 | 3.7 | PCB prêt pour commande | milestone | 0d | 2019-05-27 A | 2019-05-27 A | 22 | 100% |  |  |  |  |
| 24 | 3.8 | Fabrication du PCB de la manette universelle |  | 9d | 2019-05-27 | 2019-06-07 | 23 |  |  | 13d | 0d | start no earlier than 2019-05-27 |

| ID | WBS | Task | Type | Duration | Start | Finish | Predecessors | Complete | Remaining | Total slack | Free slack | Constraint |
| --- | --- | --- | --- | --- | --- | --- | --- | --- | --- | --- | --- | --- |
| 25 | 4 | **Assemblage** |  | 23.5d | 2019-05-13 A | 2019-06-17 |  | 42% | 13.71d | 10d |  |  |
| 26 | 4.1 | Conception Batterie |  | 2d | 2019-06-03 | 2019-06-04 |  |  |  | 13d | 0d | start no earlier than 2019-06-03 |
| 27 | 4.2 | Commande batterie | milestone | 0d | 2019-06-04 | 2019-06-04 | 26 |  |  | 13d | 3d | finish no earlier than 2019-05-20 |
| 28 | 4.3 | Délai commande de batterie |  | 5d | 2019-06-11 | 2019-06-17 | 27 |  |  | 10d | 0d | start no earlier than 2019-06-10 |
| 29 | 4.4 | Conception du boitier |  | 15d | 2019-05-13 A | 2019-06-04 |  | 75% | 3.75d | 13.25d | 0d |  |
| 30 | 4.5 | Fabrication du boitier |  | 5d | 2019-06-04 | 2019-06-12 | 29 |  |  | 13.25d | 3.25d | start no earlier than 2019-05-27 |
| 31 | 4.6 | Manette universelle montée | milestone | 0d | 2019-06-17 | 2019-06-17 | 24, 30, 28 |  |  | 10d |  | finish no earlier than 2019-05-27 |
| 32 | 5 | **Adaptation minotaure** |  | 44d | 2019-04-08 A | 2019-06-24 |  | 77% | 10.15d | 5d |  |  |
| 33 | 5.1 | Conception du PCB des boutons NKK |  | 3d | 2019-04-08 A | 2019-04-10 A |  | 100% |  |  |  | start no earlier than 2019-04-08 |
| 34 | 5.2 | PCB des boutons NKK prêt pour commande | milestone | 0d | 2019-04-12 A | 2019-04-12 A | 33 | 100% |  |  |  |  |
| 35 | 5.3 | Fabrication du PCB des boutons NKK |  | 3d | 2019-04-12 A | 2019-05-01 A | 34 | 100% |  |  |  | finish no earlier than 2019-04-30 |
| 36 | 5.4 | Prog boutons NKK |  | 4d | 2019-05-13 A | 2019-05-16 A | 35 | 100% |  |  |  | start no earlier than 2019-05-13 |
| 37 | 5.5 | Modification grand boîtier |  | 2d | 2019-06-11 | 2019-06-12 |  |  |  | 12d | 2d | start no earlier than 2019-06-10 |
| 38 | 5.6 | Montage manette minotaure |  | 1d | 2019-06-17 | 2019-06-17 | 37, 36 |  |  | 10d | 5d | start no earlier than 2019-06-17 |
| 39 | 5.7 | Manette minotaure terminée | milestone | 0d | 2019-06-24 | 2019-06-24 | 38 |  |  | 5d |  | finish no earlier than 2019-06-24 |
| 40 | 6 | **Adaptation manette console rétro** |  | 5d | 2019-06-11 | 2019-06-17 |  |  |  | 10d |  |  |
| 41 | 6.1 | Implémentation Bluetooth et batterie dans la manette existante |  | 2d | 2019-06-11 | 2019-06-12 |  |  |  | 13d | 3d | start no earlier than 2019-06-10 |
| 42 | 6.2 | Adaptation manette console rétro terminée | milestone | 0d | 2019-06-17 | 2019-06-17 | 41 |  |  | 10d |  | finish no earlier than 2019-06-17 |
| 43 | 7 | **Administratif** |  | 74d | 2019-03-04 A | 2019-07-01 |  | 53% | 34.47d | 0d |  |  |
| 44 | 7.1 | Rédaction des documents techniques |  | 71d | 2019-03-04 A | 2019-06-27 |  | 55% | 32d | 0d |  | finish no earlier than 2019-06-25 |
| 45 | 7.2 | Rédaction du rapport final |  | 2d | 2019-06-28 | 2019-07-01 | 44 |  |  | 0d |  |  |
| 46 | 7.3 | Rédaction cahier des charges pour le projet Chevaliers et Dragon | milestone | 0d | 2019-03-14 A | 2019-03-14 A |  | 100% |  |  |  | start no earlier than 2019-03-14 |
| 47 | 7.4 | Présentation sur GitHub | milestone | 0d | 2019-03-19 A | 2019-03-19 A |  | 100% |  |  |  | start no earlier than 2019-03-19 |
| 48 | 7.5 | Revue de projet | milestone | 0d | 2019-03-28 | 2019-03-28 |  |  |  | 55d |  | finish no earlier than 2019-03-28 |
| 49 | 7.6 | Revue de projet 2 | milestone | 0d | 2019-05-10 | 2019-05-10 |  |  |  | 35d |  | start no earlier than 2019-05-10 |
| 50 | 7.7 | Revue de projet 3 | milestone | 0d | 2019-06-04 | 2019-06-04 |  |  |  | 19d |  | start no earlier than 2019-06-04 |
| 51 | 7.8 | Présentation projet | milestone | 0d | 2019-04-01 A | 2019-04-01 A |  | 100% |  |  |  | finish no earlier than 2019-04-01 |
| 52 | 7.9 | Bilan du projet | milestone | 0d | 2019-05-27 | 2019-05-27 |  |  |  | 24d |  | start no earlier than 2019-05-27 |
| 53 | 8 | Mini portes ouvertes publiques | milestone | 0d | 2019-07-01 | 2019-07-01 |  |  |  | 1d |  | start no earlier than 2019-07-01 |
